# Proyecto Pan_Pa_Todos

Schedule from MS Project, 2021-01-25 to 2021-06-24, 6 hours a day, costs in $, A marks actual dates.

## Calendars

- Proytecto_Pan_Pa_Todos: Mon-Fri 12:00-18:00; Sat-Sun off. Exceptions (off unless hours are given): 2021-03-22 (Festivo : Dia San Jose), 2021-03-29 to 2021-04-02 (Festivo: Semana Santa), 2021-05-17 (Festivo: Dia de la Ascencion), 2021-06-07 (Festivo: Corpus Christi), 2021-06-14 (Festivo: Sagrado Corazón de Jesús).

## Resources

| Resource | Rate |
| --- | --- |
| Juan Contreras | 6883 |
| Yasmin Suarez | 6883 |
| Valentina Grillo | 6883 |
| Samuel Castaño | 6883 |
| Paula Patiño | 6883 |
| HTML y CSS |  |
| BD - MYSQL |  |
| PHP - XAMPP |  |
| Portatil Hp Pavilon Core i5 8th Gen | 3389000 |
| 1 año Hosting y Dominio | 208000 |

## Schedule

| ID | WBS | Task | Type | Duration | Start | Finish | Predecessors | Complete | Remaining | Total slack | Resources | Work | Actual work | Cost | Actual cost |
| --- | --- | --- | --- | --- | --- | --- | --- | --- | --- | --- | --- | --- | --- | --- | --- |
| 1 | 1 | **Proyecto_Pan_Pa_Todos** |  | 100d | 2021-01-25 A | 2021-06-24 |  | 99% | 0d | 0d | 1 año Hosting y Dominio; Portatil Hp Pavilon Core i5 8th Gen | 3092h | 3092h | 24,879,236 | 21,282,236 |
| 2 | 1.1 | **Primer Trimestre** |  | 49d | 2021-01-25 A | 2021-04-09 A |  | 100% |  |  |  | 1382h | 1382h | 9,512,306 | 9,512,306 |
| 3 | 1.1.1 | **Componente metodologico** |  | 3d | 2021-01-25 A | 2021-01-27 A |  | 100% |  |  |  | 90h | 90h | 619,470 | 619,470 |
| 4 | 1.1.1.1 | Objetivo General | manual | 3h | 2021-01-25 A | 2021-01-25 A |  | 100% |  |  | Juan Contreras; Paula Patiño; Samuel Castaño; Valentina Grillo; Yasmin Suarez | 15h | 15h | 103,245 | 103,245 |
| 5 | 1.1.1.2 | Objetivos especificos | manual | 3h | 2021-01-25 A | 2021-01-25 A | 4 | 100% |  |  | Juan Contreras; Paula Patiño; Samuel Castaño; Valentina Grillo; Yasmin Suarez | 15h | 15h | 103,245 | 103,245 |
| 6 | 1.1.1.3 | Planteamineto del problema | manual | 4h | 2021-01-26 A | 2021-01-26 A | 5 | 100% |  |  | Juan Contreras; Paula Patiño; Samuel Castaño; Valentina Grillo; Yasmin Suarez | 20h | 20h | 137,660 | 137,660 |
| 7 | 1.1.1.4 | Alcance del proyecto | manual | 4h | 2021-01-26 A | 2021-01-27 A | 6 | 100% |  |  | Juan Contreras; Paula Patiño; Samuel Castaño; Valentina Grillo; Yasmin Suarez | 20h | 20h | 137,660 | 137,660 |
| 8 | 1.1.1.5 | Justificacion | manual | 4h | 2021-01-27 A | 2021-01-27 A | 7 | 100% |  |  | Juan Contreras; Paula Patiño; Samuel Castaño; Valentina Grillo; Yasmin Suarez | 20h | 20h | 137,660 | 137,660 |
| 9 | 1.1.2 | **Tecnicas de Recolccion de informacion** |  | 7d | 2021-01-28 A | 2021-02-05 A |  | 100% |  |  |  | 162h | 162h | 1,115,046 | 1,115,046 |
| 10 | 1.1.2.1 | Entrevista | manual | 6h | 2021-01-28 A | 2021-01-28 A | 8 | 100% |  |  | Yasmin Suarez | 6h | 6h | 41,298 | 41,298 |
| 11 | 1.1.2.2 | Encuesta | manual | 6h | 2021-01-29 A | 2021-01-29 A | 10 | 100% |  |  | Paula Patiño | 6h | 6h | 41,298 | 41,298 |
| 12 | 1.1.2.3 | Mapa de Procesos | manual | 30h | 2021-02-01 A | 2021-02-05 A | 11 | 100% |  |  | Juan Contreras; Paula Patiño; Samuel Castaño; Valentina Grillo; Yasmin Suarez | 150h | 150h | 1,032,450 | 1,032,450 |
| 13 | 1.1.3 | **Versionamineto** |  | 20d | 2021-02-08 A | 2021-03-05 A |  | 100% |  |  |  | 560h | 560h | 3,854,480 | 3,854,480 |
| 14 | 1.1.3.1 | GitHub | manual | 30h | 2021-02-08 A | 2021-02-12 A | 12 | 100% |  |  | Juan Contreras; Paula Patiño; Samuel Castaño; Valentina Grillo; Yasmin Suarez | 150h | 150h | 1,032,450 | 1,032,450 |
| 15 | 1.1.3.2 | Historias de Usuario | manual | 15h | 2021-02-15 A | 2021-02-17 A | 14 | 100% |  |  | Juan Contreras; Paula Patiño; Samuel Castaño; Valentina Grillo; Yasmin Suarez | 75h | 75h | 516,225 | 516,225 |
| 16 | 1.1.3.3 | Zenhub | manual | 15h | 2021-02-17 A | 2021-02-19 A | 15 | 100% |  |  | Juan Contreras; Paula Patiño; Samuel Castaño; Valentina Grillo; Yasmin Suarez | 75h | 75h | 516,225 | 516,225 |
| 17 | 1.1.3.4 | Caso de Uso | manual | 10h | 2021-02-22 A | 2021-02-23 A | 16 | 100% |  |  | Samuel Castaño | 10h | 10h | 68,830 | 68,830 |
| 18 | 1.1.3.5 | Casos de uso extendido | manual | 20h | 2021-02-23 A | 2021-02-26 A | 17 | 100% |  |  | Juan Contreras; Paula Patiño; Samuel Castaño; Valentina Grillo; Yasmin Suarez | 100h | 100h | 688,300 | 688,300 |
| 19 | 1.1.3.6 | Inicios bases de datos | manual | 13h | 2021-03-01 A | 2021-03-03 A | 18 | 100% |  |  | Juan Contreras; Paula Patiño; Samuel Castaño; Valentina Grillo; Yasmin Suarez | 65h | 65h | 447,395 | 447,395 |
| 20 | 1.1.3.7 | Facturizacion | manual | 17h | 2021-03-03 A | 2021-03-05 A | 19 | 100% |  |  | Juan Contreras; Paula Patiño; Samuel Castaño; Valentina Grillo; Yasmin Suarez | 85h | 85h | 585,055 | 585,055 |
| 21 | 1.1.4 | **Normalizacion** |  | 10d | 2021-03-08 A | 2021-03-19 A |  | 100% |  |  |  | 300h | 300h | 2,064,900 | 2,064,900 |
| 22 | 1.1.4.1 | Normalizacion Clases | manual | 6h | 2021-03-08 A | 2021-03-08 A | 20 | 100% |  |  | Juan Contreras; Paula Patiño; Samuel Castaño; Valentina Grillo; Yasmin Suarez | 30h | 30h | 206,490 | 206,490 |
| 23 | 1.1.4.2 | Normalizacion Comparendos | manual | 6h | 2021-03-09 A | 2021-03-09 A | 22 | 100% |  |  | Juan Contreras; Paula Patiño; Samuel Castaño; Valentina Grillo; Yasmin Suarez | 30h | 30h | 206,490 | 206,490 |
| 24 | 1.1.4.3 | Normalizacion Proyectos | manual | 6h | 2021-03-10 A | 2021-03-10 A | 23 | 100% |  |  | Juan Contreras; Paula Patiño; Samuel Castaño; Valentina Grillo; Yasmin Suarez | 30h | 30h | 206,490 | 206,490 |
| 25 | 1.1.4.4 | Evaluacion Normalizacion Mascotas | manual | 6h | 2021-03-11 A | 2021-03-11 A | 24 | 100% |  |  | Juan Contreras; Paula Patiño; Samuel Castaño; Valentina Grillo; Yasmin Suarez | 30h | 30h | 206,490 | 206,490 |
| 26 | 1.1.4.5 | Normalizacion Proyecto Individual | manual | 6h | 2021-03-12 A | 2021-03-12 A | 25 | 100% |  |  | Juan Contreras; Paula Patiño; Samuel Castaño; Valentina Grillo; Yasmin Suarez | 30h | 30h | 206,490 | 206,490 |
| 27 | 1.1.4.6 | Normalizacion PcStart | manual | 6h | 2021-03-15 A | 2021-03-15 A | 26 | 100% |  |  | Juan Contreras; Paula Patiño; Samuel Castaño; Valentina Grillo; Yasmin Suarez | 30h | 30h | 206,490 | 206,490 |
| 28 | 1.1.4.7 | Normalizacion Pan_Pa_Todos | manual | 24h | 2021-03-16 A | 2021-03-19 A | 27 | 100% |  |  | Juan Contreras; Paula Patiño; Samuel Castaño; Valentina Grillo; Yasmin Suarez | 120h | 120h | 825,960 | 825,960 |

| ID | WBS | Task | Type | Duration | Start | Finish | Predecessors | Complete | Resources | Work | Actual work | Cost | Actual cost |
| --- | --- | --- | --- | --- | --- | --- | --- | --- | --- | --- | --- | --- | --- |
| 29 | 1.1.5 | **Diseño bases de datos** |  | 4d | 2021-03-23 A | 2021-03-26 A |  | 100% |  | 120h | 120h | 825,960 | 825,960 |
| 30 | 1.1.5.1 | Cardinalidades | manual | 24h | 2021-03-23 A | 2021-03-26 A | 28 | 100% | Juan Contreras; Paula Patiño; Samuel Castaño; Valentina Grillo; Yasmin Suarez | 120h | 120h | 825,960 | 825,960 |
| 31 | 1.1.6 | **Modelo Entidad Relacion** |  | 5d | 2021-04-05 A | 2021-04-09 A |  | 100% |  | 150h | 150h | 1,032,450 | 1,032,450 |
| 32 | 1.1.6.1 | WorkBench | manual | 9h | 2021-04-05 A | 2021-04-06 A | 30 | 100% | Juan Contreras; Paula Patiño; Samuel Castaño; Valentina Grillo; Yasmin Suarez | 45h | 45h | 309,735 | 309,735 |
| 33 | 1.1.6.2 | Diccionario de datos | manual | 9h | 2021-04-06 A | 2021-04-07 A | 32 | 100% | Juan Contreras; Paula Patiño; Samuel Castaño; Valentina Grillo; Yasmin Suarez | 45h | 45h | 309,735 | 309,735 |
| 34 | 1.1.6.3 | Sustentacion Primer Trimestre | manual | 12h | 2021-04-08 A | 2021-04-09 A | 33 | 100% | Juan Contreras; Paula Patiño; Samuel Castaño; Valentina Grillo; Yasmin Suarez | 60h | 60h | 412,980 | 412,980 |
| 35 | 1.2 | **Segundo Trimestre** |  | 39d | 2021-04-12 A | 2021-06-04 A |  | 100% |  | 1170h | 1170h | 8,053,110 | 8,053,110 |
| 36 | 1.2.1 | **Inicio** |  | 5d | 2021-04-12 A | 2021-04-16 A |  | 100% |  | 150h | 150h | 1,032,450 | 1,032,450 |
| 37 | 1.2.1.1 | Inicio Segundo Trimestre | manual | 30h | 2021-04-12 A | 2021-04-16 A | 34 | 100% | Juan Contreras; Paula Patiño; Samuel Castaño; Valentina Grillo; Yasmin Suarez | 150h | 150h | 1,032,450 | 1,032,450 |
| 38 | 1.2.2 | **Gantt** |  | 5d | 2021-04-19 A | 2021-04-23 A |  | 100% |  | 150h | 150h | 1,032,450 | 1,032,450 |
| 39 | 1.2.2.1 | Diagrama de Gantt | manual | 18h | 2021-04-19 A | 2021-04-21 A | 37 | 100% | Juan Contreras; Paula Patiño; Samuel Castaño; Valentina Grillo; Yasmin Suarez | 90h | 90h | 619,470 | 619,470 |
| 40 | 1.2.2.2 | Recursos e Informes | manual | 6h | 2021-04-22 A | 2021-04-22 A | 39 | 100% | Juan Contreras; Paula Patiño; Samuel Castaño; Valentina Grillo; Yasmin Suarez | 30h | 30h | 206,490 | 206,490 |
| 41 | 1.2.2.3 | Kahoot Gantt | manual | 6h | 2021-04-23 A | 2021-04-23 A | 40 | 100% | Juan Contreras; Paula Patiño; Samuel Castaño; Valentina Grillo; Yasmin Suarez | 30h | 30h | 206,490 | 206,490 |
| 42 | 1.2.3 | **DDL** |  | 10d | 2021-04-26 A | 2021-05-07 A |  | 100% |  | 300h | 300h | 2,064,900 | 2,064,900 |
| 43 | 1.2.3.1 | Repaso DB | manual | 18h | 2021-04-26 A | 2021-04-28 A | 41 | 100% | Juan Contreras; Paula Patiño; Samuel Castaño; Valentina Grillo; Yasmin Suarez | 90h | 90h | 619,470 | 619,470 |
| 44 | 1.2.3.2 | Creacion DB Pan_Pa_Todos | manual | 12h | 2021-04-29 A | 2021-04-30 A | 43 | 100% | Juan Contreras; Paula Patiño; Samuel Castaño; Valentina Grillo; Yasmin Suarez | 60h | 60h | 412,980 | 412,980 |
| 45 | 1.2.3.3 | Foreign Keys | manual | 30h | 2021-05-03 A | 2021-05-07 A | 44 | 100% | Juan Contreras; Paula Patiño; Samuel Castaño; Valentina Grillo; Yasmin Suarez | 150h | 150h | 1,032,450 | 1,032,450 |
| 46 | 1.2.4 | **DML** |  | 9d | 2021-05-10 A | 2021-05-21 A |  | 100% |  | 270h | 270h | 1,858,410 | 1,858,410 |
| 47 | 1.2.4.1 | Joins | manual | 15h | 2021-05-10 A | 2021-05-12 A | 45 | 100% | Juan Contreras; Paula Patiño; Samuel Castaño; Valentina Grillo; Yasmin Suarez | 75h | 75h | 516,225 | 516,225 |
| 48 | 1.2.4.2 | Joins Multiples | manual | 39h | 2021-05-12 A | 2021-05-21 A |  | 100% | Juan Contreras; Paula Patiño; Samuel Castaño; Valentina Grillo; Yasmin Suarez | 195h | 195h | 1,342,185 | 1,342,185 |
| 49 | 1.2.5 | **Mockups** |  | 2.5d | 2021-05-24 A | 2021-05-26 A |  | 100% |  | 75h | 75h | 516,225 | 516,225 |
| 50 | 1.2.5.1 | Revision Mockups | manual | 15h | 2021-05-24 A | 2021-05-26 A | 48 | 100% | Juan Contreras; Paula Patiño; Samuel Castaño; Valentina Grillo; Yasmin Suarez | 75h | 75h | 516,225 | 516,225 |
| 51 | 1.2.6 | **Html y Css** |  | 7.5d | 2021-05-26 A | 2021-06-04 A |  | 100% |  | 225h | 225h | 1,548,675 | 1,548,675 |
| 52 | 1.2.6.1 | Codigo Html y Css | manual | 15h | 2021-05-26 A | 2021-05-28 A | 50 | 100% | Juan Contreras; Paula Patiño; Samuel Castaño; Valentina Grillo; Yasmin Suarez | 75h | 75h | 516,225 | 516,225 |
| 53 | 1.2.6.2 | Portafolio del Aprendiz | manual | 12h | 2021-05-31 A | 2021-06-01 A | 52 | 100% | Juan Contreras; Paula Patiño; Samuel Castaño; Valentina Grillo; Yasmin Suarez | 60h | 60h | 412,980 | 412,980 |
| 54 | 1.2.6.3 | Css Bootstrap | manual | 18h | 2021-06-02 A | 2021-06-04 A | 53 | 100% | Juan Contreras; Paula Patiño; Samuel Castaño; Valentina Grillo; Yasmin Suarez | 90h | 90h | 619,470 | 619,470 |

| ID | WBS | Task | Duration | Start | Finish | Predecessors | Complete | Resources | Work | Actual work | Cost | Actual cost |
| --- | --- | --- | --- | --- | --- | --- | --- | --- | --- | --- | --- | --- |
| 55 | 1.3 | **Tercer Trimestre** | 94d | 2021-01-25 A | 2021-06-16 A | 35 | 100% |  | 396h | 396h | 2,725,668 | 2,725,668 |
| 56 | 1.3.1 | Manual Tecnico | 12h | 2021-01-25 A | 2021-06-08 A |  | 100% | Juan Contreras; Paula Patiño; Samuel Castaño; Valentina Grillo; Yasmin Suarez | 60h | 60h | 412,980 | 412,980 |
| 57 | 1.3.2 | Plan de Pruebas | 18h | 2021-01-25 A | 2021-06-10 A | 56 | 100% | Paula Patiño; Valentina Grillo; Yasmin Suarez | 54h | 54h | 371,682 | 371,682 |
| 58 | 1.3.3 | Manual de Instalacion | 12h | 2021-01-25 A | 2021-06-08 A |  | 100% | Juan Contreras; Paula Patiño; Samuel Castaño; Valentina Grillo; Yasmin Suarez | 60h | 60h | 412,980 | 412,980 |
| 59 | 1.3.4 | Diagrama de Distribucion | 12h | 2021-01-25 A | 2021-06-09 A | 58 | 100% | Samuel Castaño; Valentina Grillo; Yasmin Suarez | 36h | 36h | 247,788 | 247,788 |
| 60 | 1.3.5 | Informe de Migracioin de datos | 18h | 2021-01-25 A | 2021-06-11 A | 59 | 100% | Juan Contreras; Paula Patiño; Samuel Castaño; Valentina Grillo; Yasmin Suarez | 90h | 90h | 619,470 | 619,470 |
| 61 | 1.3.6 | Pan de Instalacion, plan de respaldo y plan de migracion | 24h | 2021-01-25 A | 2021-06-16 A | 60 | 100% | Juan Contreras; Paula Patiño; Valentina Grillo; Yasmin Suarez | 96h | 96h | 660,768 | 660,768 |
| 62 | 1.4 | **Cuarto Trimestre** | 6d | 2021-06-16 A | 2021-06-24 A | 55, 61 | 100% |  | 144h | 144h | 991,152 | 991,152 |
| 63 | 1.4.1 | Cuadro comparativo Proveedores | 12h | 2021-06-16 A | 2021-06-18 A |  | 100% | Paula Patiño; Samuel Castaño; Valentina Grillo; Yasmin Suarez | 48h | 48h | 330,384 | 330,384 |
| 64 | 1.4.2 | Contrato de Desarrollo de software | 12h | 2021-06-21 A | 2021-06-22 A | 63 | 100% | Paula Patiño; Samuel Castaño; Yasmin Suarez | 36h | 36h | 247,788 | 247,788 |
| 65 | 1.4.3 | Documentacion de Pruebas | 12h | 2021-06-23 A | 2021-06-24 A | 64 | 100% | Juan Contreras; Paula Patiño; Samuel Castaño; Valentina Grillo; Yasmin Suarez | 60h | 60h | 412,980 | 412,980 |
